How a schedule from MS Project changed from version to version. A marks actual dates.

## Version 1 (data date 2021-02-27, saved 2021-04-07, file Legasy.mpp)

Note of the change: EPI lab05: Done

| ID | WBS | Task | Duration | Start | Finish | Predecessors | Total float | Constraint |
| --- | --- | --- | --- | --- | --- | --- | --- | --- |
| 1 |  | Начало проекта | 0w | 2021-03-01 08:00 | 2021-03-01 08:00 |  | 45.67d |  |
| 2 | 2 | **Совещание** | 106.12d | 2021-03-03 09:00 | 2021-08-04 10:00 |  | 2.49d |  |
| 3 |  | Совещание 1 | 1h | 2021-03-03 09:00 | 2021-03-03 10:00 |  | 108.49d | start no earlier than 2021-03-03 08:00 |
| 4 |  | Совещание 2 | 1h | 2021-03-10 09:00 | 2021-03-10 10:00 |  | 104.49d | start no earlier than 2021-03-10 08:00 |
| 5 |  | Совещание 3 | 1h | 2021-03-17 09:00 | 2021-03-17 10:00 |  | 99.49d | start no earlier than 2021-03-17 08:00 |
| 6 |  | Совещание 4 | 1h | 2021-03-24 09:00 | 2021-03-24 10:00 |  | 94.49d | start no earlier than 2021-03-24 08:00 |
| 7 |  | Совещание 5 | 1h | 2021-03-31 09:00 | 2021-03-31 10:00 |  | 89.49d | start no earlier than 2021-03-31 08:00 |
| 8 |  | Совещание 6 | 1h | 2021-04-07 09:00 | 2021-04-07 10:00 |  | 84.49d | start no earlier than 2021-04-07 08:00 |
| 9 |  | Совещание 7 | 1h | 2021-04-14 09:00 | 2021-04-14 10:00 |  | 79.49d | start no earlier than 2021-04-14 08:00 |
| 10 |  | Совещание 8 | 1h | 2021-04-21 09:00 | 2021-04-21 10:00 |  | 74.49d | start no earlier than 2021-04-21 08:00 |
| 11 |  | Совещание 9 | 1h | 2021-04-28 09:00 | 2021-04-28 10:00 |  | 69.49d | start no earlier than 2021-04-28 08:00 |
| 12 |  | Совещание 10 | 1h | 2021-05-05 09:00 | 2021-05-05 10:00 |  | 65.49d | start no earlier than 2021-05-05 08:00 |
| 13 |  | Совещание 11 | 1h | 2021-05-12 09:00 | 2021-05-12 10:00 |  | 61.49d | start no earlier than 2021-05-12 08:00 |
| 14 |  | Совещание 12 | 1h | 2021-05-19 09:00 | 2021-05-19 10:00 |  | 56.49d | start no earlier than 2021-05-19 08:00 |
| 15 |  | Совещание 13 | 1h | 2021-05-26 09:00 | 2021-05-26 10:00 |  | 51.49d | start no earlier than 2021-05-26 08:00 |
| 16 |  | Совещание 14 | 1h | 2021-06-02 09:00 | 2021-06-02 10:00 |  | 46.49d | start no earlier than 2021-06-02 08:00 |
| 17 |  | Совещание 15 | 1h | 2021-06-09 09:00 | 2021-06-09 10:00 |  | 41.49d | start no earlier than 2021-06-09 08:00 |
| 18 |  | Совещание 16 | 1h | 2021-06-16 09:00 | 2021-06-16 10:00 |  | 37.49d | start no earlier than 2021-06-16 08:00 |
| 19 |  | Совещание 17 | 1h | 2021-06-23 09:00 | 2021-06-23 10:00 |  | 32.49d | start no earlier than 2021-06-23 08:00 |
| 20 |  | Совещание 18 | 1h | 2021-06-30 09:00 | 2021-06-30 10:00 |  | 27.49d | start no earlier than 2021-06-30 08:00 |
| 21 |  | Совещание 19 | 1h | 2021-07-07 09:00 | 2021-07-07 10:00 |  | 22.49d | start no earlier than 2021-07-07 08:00 |
| 22 |  | Совещание 20 | 1h | 2021-07-14 09:00 | 2021-07-14 10:00 |  | 17.49d | start no earlier than 2021-07-14 08:00 |
| 23 |  | Совещание 21 | 1h | 2021-07-21 09:00 | 2021-07-21 10:00 |  | 12.49d | start no earlier than 2021-07-21 08:00 |
| 24 |  | Совещание 22 | 1h | 2021-07-28 09:00 | 2021-07-28 10:00 |  | 7.49d | start no earlier than 2021-07-28 08:00 |
| 25 |  | Совещание 23 | 1h | 2021-08-04 09:00 | 2021-08-04 10:00 |  | 2.49d | start no earlier than 2021-08-04 08:00 |
| 26 | 3 | **Создание интерфейса** | 86.46d | 2021-03-01 09:00 | 2021-07-05 12:42 | 1 | 0d |  |
| 27 | 3.1 | **Разработка дизайна интерфейса** | 25.79d | 2021-03-01 09:00 | 2021-04-06 16:20 |  | 45.67d |  |
| 28 |  | Разработка 2D графических элементов | 3w | 2021-03-01 09:00 | 2021-03-23 12:00 |  | 45.67d |  |
| 29 |  | Разработка 3D графичиских элементов | 2w | 2021-03-01 09:00 | 2021-03-16 12:20 | 28SS | 45.67d |  |
| 30 |  | Создание заставки | 3w | 2021-03-16 12:20 | 2021-04-06 16:20 | 29 | 45.67d |  |
| 31 |  | Программирование интерфейса | 3w | 2021-06-11 12:42 | 2021-07-05 12:42 | 27, 36 | 0d |  |
| 32 | 4 | **Построение базы объектов** | 85.25d | 2021-03-23 12:00 | 2021-07-23 15:00 |  | 9.99d |  |
| 33 |  | Анализ и построение структуры базы объектов | 2w | 2021-03-23 12:00 | 2021-04-06 15:00 |  | 9.99d |  |
| 34 |  | Программирование средств обработки базы объектов | 3w | 2021-04-06 15:00 | 2021-04-27 15:00 | 33 | 9.99d |  |
| 35 |  | Наполнение базы объектов | 12w | 2021-04-27 15:00 | 2021-07-23 15:00 | 34 | 9.99d |  |
| 36 | 5 | **Создание ядра GIS** | 71.46d | 2021-03-01 09:00 | 2021-06-11 12:42 |  | 0d |  |
| 37 |  | Анализ и проектирование ядра | 3.08w | 2021-03-01 09:00 | 2021-03-23 14:20 |  | 0d |  |
| 38 |  | Создание модели ядра | 3.41w | 2021-03-23 14:20 | 2021-04-15 14:33 | 37 | 0d |  |
| 39 |  | Тестирование модели ядра | 1w | 2021-04-15 14:33 | 2021-04-22 14:33 | 38 | 0d |  |
| 40 |  | Создание рабочей версии ядра | 6.78w | 2021-04-22 14:33 | 2021-06-11 12:42 | 39 | 0d |  |
| 41 |  | Создание мультимедиа - наполнения | 6w | 2021-04-06 16:20 | 2021-05-21 15:20 | 27 | 53.94d |  |
| 42 |  | Создание справочной системы | 2w | 2021-07-19 09:00 | 2021-08-02 13:00 | 31 | 4.11d |  |
| 43 | 8 | **Создание руководства пользователя** | 18.12d | 2021-06-21 12:42 | 2021-07-15 14:42 | 31FS-10d | 0d |  |
| 44 |  | Разработка дизайна руководства | 1w | 2021-06-21 12:42 | 2021-06-28 16:42 |  | 0d |  |
| 45 |  | Написание руководства пользователя | 3w | 2021-06-23 12:42 | 2021-07-15 14:42 | 44SS+2d | 0d |  |
| 46 | 9 | **Создание web - сайта и поддержка** | 24.66d | 2021-06-23 12:42 | 2021-07-28 10:00 |  | 0d |  |
| 47 |  | Разработка структуры сайта | 1d | 2021-06-23 12:42 | 2021-06-24 12:42 | 45SS | 0d |  |
| 48 |  | Разработка дизайна сайта | 1.49w | 2021-06-24 14:00 | 2021-07-06 10:42 | 47 | 0d |  |
| 49 |  | Наполнение сайта | 3w | 2021-07-06 10:42 | 2021-07-28 10:00 | 48 | 0d |  |
| 50 |  | Тестирование сайта | 2.5w | 2021-07-21 10:00 | 2021-08-06 14:53 | 46FS-1w | 0d |  |
| 51 |  | Сдача сайта в эксплуатацию | 0w | 2021-08-06 14:53 | 2021-08-06 14:53 | 50 | 0d |  |

## Version 2 (data date 2021-05-20, saved 2021-04-25, file lab5_3.mpp)

Note of the change: EPI lab05: Done

Last finish 2021-08-06 → 2021-07-23 (-14d).

Added:

| ID | Task | Duration | Start | Finish |
| --- | --- | --- | --- | --- |
| 2 | **Повторяющиеся задачи** | 96.88d | 2021-03-03 09:00 | 2021-07-21 17:00 |
| 22 | **Анализ** | 30.75d | 2021-03-01 09:00 | 2021-04-13 16:00 |
| 25 | **Документация** | 18d | 2021-03-25 12:00 | 2021-04-20 12:01 |
| 27 | **Внесение данных** | 61.25d | 2021-04-23 09:00 | 2021-07-22 11:00 |
| 31 | **Разработка** | 100.05d | 2021-03-01 09:00 | 2021-07-23 09:24 |
| 41 | **Тестирование** | 57.12d | 2021-04-14 11:55 | 2021-07-07 12:52 |
| 44 | **Программирование** | 55.74d | 2021-04-13 16:00 | 2021-07-05 12:54 |

Removed: 16 Совещание 14; 17 Совещание 15; 18 Совещание 16; 24 Совещание 22; 25 Совещание 23; 27 Разработка дизайна интерфейса; 43 Создание руководства пользователя; 46 Создание web - сайта и поддержка

Changed:

| ID | Task | Start | Finish | Duration | Total float | Predecessors | Other |
| --- | --- | --- | --- | --- | --- | --- | --- |
| 3 | **Совещание** |  | 2021-08-04 10:00 → 2021-07-21 17:00 (-14d) | 106.12d → 96.88d | 2.49d → 1.18d |  |  |
| 4 | Совещание 1 |  | 2021-03-03 10:00 → 2021-03-03 09:48 | 1h → 0.8h | 108.49d → 97.95d |  | resources 3D аниматор; Web-дизайнер; Ведущий программист; Мультимедиа-корреспондент; Системный аналитик; Технический писатель; Художник-дизайнер → 3D аниматор; Ведущий программист; Системный аналитик; Художник-дизайнер; Мультимедиа-корреспондент |
| 5 | Совещание 2 |  | 2021-03-10 10:00 → 2021-03-10 09:48 | 1h → 0.8h | 104.49d → 93.95d |  | resources 3D аниматор; Web-дизайнер; Ведущий программист; Мультимедиа-корреспондент; Системный аналитик; Технический писатель; Художник-дизайнер → 3D аниматор; Ведущий программист; Системный аналитик; Художник-дизайнер; Мультимедиа-корреспондент |
| 6 | Совещание 3 |  | 2021-03-17 10:00 → 2021-03-17 09:48 | 1h → 0.8h | 99.49d → 88.95d |  | resources 3D аниматор; Web-дизайнер; Ведущий программист; Мультимедиа-корреспондент; Системный аналитик; Технический писатель; Художник-дизайнер → 3D аниматор; Ведущий программист; Системный аналитик; Художник-дизайнер; Мультимедиа-корреспондент |
| 7 | Совещание 4 |  | 2021-03-24 10:00 → 2021-03-24 09:25 | 1h → 0.43h | 94.49d → 84d |  | resources 3D аниматор; Web-дизайнер; Ведущий программист; Мультимедиа-корреспондент; Системный аналитик; Технический писатель; Художник-дизайнер → 3D аниматор; Ведущий программист; Системный аналитик; Художник-дизайнер; Web-дизайнер; Мультимедиа-корреспондент; Технический писатель |
| 8 | Совещание 5 |  | 2021-03-31 10:00 → 2021-03-31 09:25 | 1h → 0.43h | 89.49d → 79d |  | resources 3D аниматор; Web-дизайнер; Ведущий программист; Мультимедиа-корреспондент; Системный аналитик; Технический писатель; Художник-дизайнер → 3D аниматор; Ведущий программист; Системный аналитик; Художник-дизайнер; Web-дизайнер; Мультимедиа-корреспондент; Технический писатель |
| 9 | Совещание 6 |  | 2021-04-07 10:00 → 2021-04-07 09:40 | 1h → 0.67h | 84.49d → 73.97d |  | resources 3D аниматор; Web-дизайнер; Ведущий программист; Мультимедиа-корреспондент; Системный аналитик; Технический писатель; Художник-дизайнер → 3D аниматор; Ведущий программист [20%]; Мультимедиа-корреспондент; Системный аналитик; Художник-дизайнер; Технический писатель |
| 10 | Совещание 7 |  | 2021-04-14 10:00 → 2021-04-14 09:30 | 1h → 0.5h | 79.49d → 68.99d |  | resources 3D аниматор; Web-дизайнер; Ведущий программист; Мультимедиа-корреспондент; Системный аналитик; Технический писатель; Художник-дизайнер → Ведущий программист; Мультимедиа-корреспондент; 3D аниматор; Технический писатель |
| 11 | Совещание 8 |  | 2021-04-21 10:00 → 2021-04-21 09:40 | 1h → 0.67h | 74.49d → 63.97d |  | resources 3D аниматор; Web-дизайнер; Ведущий программист; Мультимедиа-корреспондент; Системный аналитик; Технический писатель; Художник-дизайнер → Ведущий программист; 3D аниматор; Web-дизайнер |
| 12 | Совещание 9 |  |  |  | 69.49d → 58.92d |  | resources 3D аниматор; Web-дизайнер; Ведущий программист; Мультимедиа-корреспондент; Системный аналитик; Технический писатель; Художник-дизайнер → Ведущий программист; Web-дизайнер |
| 13 | Совещание 10 |  |  |  | 65.49d → 54.92d |  | resources 3D аниматор; Web-дизайнер; Ведущий программист; Мультимедиа-корреспондент; Системный аналитик; Технический писатель; Художник-дизайнер → Ведущий программист; Web-дизайнер |
| 14 | Совещание 11 |  |  |  | 61.49d → 50.92d |  | resources 3D аниматор; Web-дизайнер; Ведущий программист; Мультимедиа-корреспондент; Системный аналитик; Технический писатель; Художник-дизайнер → Ведущий программист; Web-дизайнер |
| 15 | Совещание 12 |  | 2021-05-19 10:00 → 2021-05-19 11:00 | 1h → 2h | 56.49d → 45.8d |  | resources 3D аниматор; Web-дизайнер; Ведущий программист; Мультимедиа-корреспондент; Системный аналитик; Технический писатель; Художник-дизайнер → Ведущий программист |
| 16 | Совещание 13 |  | 2021-05-26 10:00 → 2021-05-26 17:00 | 1h → 7h | 51.49d → 40.17d |  | resources 3D аниматор; Web-дизайнер; Ведущий программист; Мультимедиа-корреспондент; Системный аналитик; Технический писатель; Художник-дизайнер → Ведущий программист |
| 17 | Совещание 17 |  | 2021-06-23 10:00 → 2021-06-23 17:00 | 1h → 7h | 32.49d → 21.18d |  | resources 3D аниматор; Web-дизайнер; Ведущий программист; Мультимедиа-корреспондент; Системный аналитик; Технический писатель; Художник-дизайнер → Ведущий программист |
| 18 | Совещание 18 |  | 2021-06-30 10:00 → 2021-06-30 17:00 | 1h → 7h | 27.49d → 16.18d |  | resources 3D аниматор; Web-дизайнер; Ведущий программист; Мультимедиа-корреспондент; Системный аналитик; Технический писатель; Художник-дизайнер → Ведущий программист |
| 19 | Совещание 19 |  | 2021-07-07 10:00 → 2021-07-07 12:30 | 1h → 3.5h | 22.49d → 11.61d |  | resources 3D аниматор; Web-дизайнер; Ведущий программист; Мультимедиа-корреспондент; Системный аналитик; Технический писатель; Художник-дизайнер → Технический писатель; Ведущий программист |
| 20 | Совещание 20 |  | 2021-07-14 10:00 → 2021-07-14 12:30 | 1h → 3.5h | 17.49d → 6.61d |  | resources 3D аниматор; Web-дизайнер; Ведущий программист; Мультимедиа-корреспондент; Системный аналитик; Технический писатель; Художник-дизайнер → Технический писатель; Ведущий программист |
| 21 | Совещание 21 |  | 2021-07-21 10:00 → 2021-07-21 17:00 | 1h → 7h | 12.49d → 1.18d |  | resources 3D аниматор; Web-дизайнер; Ведущий программист; Мультимедиа-корреспондент; Системный аналитик; Технический писатель; Художник-дизайнер → Технический писатель |
| 24 | Анализ и построение структуры базы объектов |  | 2021-04-06 15:00 → 2021-04-13 16:00 (+7d) | 2w → 3w | 9.99d → 0.8d |  |  |
| 26 | Написание руководства пользователя | 2021-06-23 12:42 → 2021-03-25 12:00 (-90d) | 2021-07-15 14:42 → 2021-04-20 12:01 (-86d) |  | 0d → 48.48d |  |  |
| 28 | Наполнение сайта | 2021-07-06 10:42 → 2021-04-23 09:00 (-74d) | 2021-07-28 10:00 → 2021-05-18 12:00 (-71d) |  | 0d → 46.67d |  | constraint none → start no earlier than 2021-04-23 09:00 |
| 29 | **Построение базы объектов** | 2021-03-23 12:00 → 2021-04-26 11:00 (+34d) | 2021-07-23 15:00 → 2021-07-22 11:00 (-1d) | 85.25d → 60d | 9.99d → 0.8d |  | resources Дополнительный сервер → Сервер [0.1%]; Дополнительный сервер |
| 30 | Наполнение базы объектов | 2021-04-27 15:00 → 2021-04-26 11:00 (-1d) | 2021-07-23 15:00 → 2021-07-22 11:00 (-1d) |  | 9.99d → 0.8d |  |  |
| 32 | Создание справочной системы | 2021-07-19 09:00 → 2021-07-07 12:30 (-12d) | 2021-08-02 13:00 → 2021-07-23 09:24 (-10d) |  | 4.11d → 0d |  | constraint none → start no earlier than 2021-07-07 09:00 |
| 33 | Разработка дизайна сайта | 2021-06-24 14:00 → 2021-03-26 12:26 (-90d) | 2021-07-06 10:42 → 2021-04-21 10:35 (-76d) | 1.49w → 2.94w | 0d → 48.48d |  |  |
| 34 | Разработка структуры сайта | 2021-06-23 12:42 → 2021-03-25 12:00 (-90d) | 2021-06-24 12:42 → 2021-03-26 12:00 (-90d) |  | 0d → 48.48d |  |  |
| 35 | Создание мультимедиа - наполнения | 2021-04-06 16:20 → 2021-03-01 09:00 (-36d) | 2021-05-21 15:20 → 2021-04-15 16:18 (-36d) |  | 53.94d → 67.26d | Разработка дизайна интерфейса → none |  |
| 36 | Разработка дизайна руководства | 2021-06-21 12:42 → 2021-03-23 12:00 (-90d) | 2021-06-28 16:42 → 2021-04-01 14:45 (-88d) |  | 0d → 48.48d |  |  |
| 37 | Создание модели ядра |  | 2021-04-15 14:33 → 2021-04-14 11:55 (-1d) | 3.41w → 2.89w | 0d → 1.51d |  | resources Ведущий программист; Программист#1; Программист#2 → Ведущий программист; Программист#1; Программист#2; Программист#3; Программист#4 |
| 40 | Создание заставки |  | 2021-04-06 16:20 → 2021-04-16 15:20 (+10d) | 3w → 4w | 45.67d → 66.38d |  |  |
| 42 | Тестирование модели ядра | 2021-04-15 14:33 → 2021-04-14 11:55 (-1d) | 2021-04-22 14:33 → 2021-04-15 11:55 (-7d) | 1w → 0.2w | 0d → 1.51d |  | resources Программист#1 → Программист#1; Ведущий программист; Программист#2; Программист#3; Программист#4 |
| 43 | Тестирование сайта | 2021-07-21 10:00 → 2021-04-26 11:00 (-86d) | 2021-08-06 14:53 → 2021-07-07 12:52 (-30d) | 2.5w → 5.04w | 0d → 11.56d | Создание web - сайта и поддержкаFS-1w → none | constraint none → start no earlier than 2021-04-26 11:00 |
| 45 | Программирование средств обработки базы объектов | 2021-04-06 15:00 → 2021-04-13 16:00 (+7d) | 2021-04-27 15:00 → 2021-04-26 11:00 (-1d) | 3w → 1.5w | 9.99d → 0.8d |  | resources Программист#3; Программист#4 → Программист#3; Программист#4; Программист#2; Программист#1 |
| 46 | **Создание ядра GIS** | 2021-03-01 09:00 → 2021-04-15 11:55 (+45d) | 2021-06-11 12:42 → 2021-06-22 14:42 (+11d) | 71.46d → 45.22d | 0d → 1.51d |  |  |
| 47 | Создание рабочей версии ядра | 2021-04-22 14:33 → 2021-04-15 11:55 (-7d) | 2021-06-11 12:42 → 2021-06-22 14:42 (+11d) | 6.78w → 9.03w | 0d → 1.51d |  | constraint none → start no earlier than 2021-04-15 11:55 |
| 48 | **Создание интерфейса** | 2021-03-01 09:00 → 2021-06-22 14:42 (+113d) | 2021-07-05 12:42 → 2021-07-05 12:54 | 86.46d → 8.9d | 0d → 1.51d |  |  |
| 49 | Программирование интерфейса | 2021-06-11 12:42 → 2021-06-22 14:42 (+11d) | 2021-07-05 12:42 → 2021-07-05 12:54 | 3w → 1.57w | 0d → 1.51d | Разработка дизайна интерфейса, 46 → 46 | constraint none → start no earlier than 2021-06-22 14:42; resources Программист#3; Программист#4 → Программист#3; Программист#4; Программист#1; Программист#2; Ведущий программист |
| 50 | Сдача сайта в эксплуатацию | 2021-08-06 14:53 → 2021-07-07 12:52 (-30d) | 2021-08-06 14:53 → 2021-07-07 12:52 (-30d) |  | 0d → 11.56d |  |  |
